# Cronograma

Schedule from MS Project, 2008-10-02 to 2008-10-02, costs in R$.
Mobile

## Calendars

- Standard: Mon-Fri 08:00-12:00, 13:00-17:00; Sat-Sun off.

## Resources

| Resource | Rate |
| --- | --- |
| George Melo | 30 |
| Antonio Carlos | 30 |
| Leszek Trajano | 30 |
| Humberto Marques | 30 |

## Schedule

| ID | WBS | Task | Duration | Start | Finish | Predecessors | Total slack | Free slack | Resources | Work | Cost |
| --- | --- | --- | --- | --- | --- | --- | --- | --- | --- | --- | --- |
| 1 | 1 | **BPAD** | 1d? | 2008-10-02 | 2008-10-02 |  | 0d |  |  | 52.5h | 1,575 |
| 2 | 1.1 | **Realese 1** | 1d? | 2008-10-02 | 2008-10-02 |  | 0d |  |  | 52.5h | 1,575 |
| 3 | 1.1.1 | Brainstorm Documentação | 1h | 2008-10-02 | 2008-10-02 |  | 0.88d |  | Antonio Carlos | 1h | 30 |
| 4 | 1.1.2 | **Criação do Banco de Dados** | 0.38d | 2008-10-02 | 2008-10-02 |  | 0.62d |  |  | 3h | 90 |
| 5 | 1.1.2.1 | Script SQL | 2h | 2008-10-02 | 2008-10-02 |  | 0.62d | 0d | Humberto Marques | 2h | 60 |
| 6 | 1.1.2.2 | Popular Tabelas Auxiliares ao Banco | 1h | 2008-10-02 | 2008-10-02 | 5 | 0.62d |  | Humberto Marques | 1h | 30 |
| 7 | 1.1.3 | **Implementação dos Casos de Uso Mobile** | 1d? | 2008-10-02 | 2008-10-02 |  | 0d |  |  | 24h | 720 |
| 8 | 1.1.3.1 | Modelo de Navegação | 8h? | 2008-10-02 | 2008-10-02 |  | 0d |  | Antonio Carlos | 8h | 240 |
| 9 | 1.1.3.2 | Criação de Protótipo de Interface | 1d? | 2008-10-02 | 2008-10-02 |  | 0d |  | George Melo | 8h | 240 |
| 10 | 1.1.3.3 | Efetuar Login | 8h? | 2008-10-02 | 2008-10-02 |  | 0d |  | George Melo | 8h | 240 |
| 11 | 1.1.4 | **Implementação dos Casos de Uso Web** | 1d? | 2008-10-02 | 2008-10-02 |  | 0d |  |  | 24.5h | 735 |
| 12 | 1.1.4.1 | Efetuar Login | 1d? | 2008-10-02 | 2008-10-02 |  | 0d |  | Leszek Trajano | 8h | 240 |
| 13 | 1.1.4.2 | Cadastrar Unidade de Saude | 0.06d | 2008-10-02 | 2008-10-02 |  | 0.94d |  | Leszek Trajano | 0.5h | 15 |
| 14 | 1.1.4.3 | Atualizar Unidade de Saude | 1d? | 2008-10-02 | 2008-10-02 |  | 0d |  | Leszek Trajano | 8h | 240 |
| 15 | 1.1.4.4 | Consultar Unidade de Saude | 1d? | 2008-10-02 | 2008-10-02 |  | 0d |  | Leszek Trajano | 8h | 240 |
| 16 | 1.1.4.5 | Cadastrar Profissional de Saude | 1d? | 2008-10-02 | 2008-10-02 |  | 0d |  |  |  |  |
| 19 | 2 | Realese 3 | 1d? | 2008-10-02 | 2008-10-02 |  | 0d |  |  |  |  |
| 22 | 3 | **Realese 4** | 1d? | 2008-10-02 | 2008-10-02 |  | 0d |  |  | 8h | 240 |
| 23 | 3.1 | **Implementação dos Casos de Uso Mobile** | 1d? | 2008-10-02 | 2008-10-02 |  | 0d |  |  | 8h | 240 |
| 24 | 3.1.1 | Modelo de Navegação | 1d? | 2008-10-02 | 2008-10-02 |  | 0d |  | Antonio Carlos | 8h | 240 |
| 25 | 3.1.2 | Criação de Protótipo de Interface | 1d? | 2008-10-02 | 2008-10-02 |  | 0d |  |  |  |  |
| 26 | 3.1.3 | Efetuar Login | 1d? | 2008-10-02 | 2008-10-02 |  | 0d |  |  |  |  |
| 27 | 3.1.4 | Preencher Ficha Diária | 1d? | 2008-10-02 | 2008-10-02 |  | 0d |  |  |  |  |
| 28 | 3.1.5 | Cadastrar Paciente | 1d? | 2008-10-02 | 2008-10-02 |  | 0d |  |  |  |  |
| 29 | 3.1.6 | Consultar Paciente | 1d? | 2008-10-02 | 2008-10-02 |  | 0d |  |  |  |  |
| 30 | 3.1.7 | Atualizar Paciente | 1d? | 2008-10-02 | 2008-10-02 |  | 0d |  |  |  |  |
| 31 | 3.1.8 | Sincronizar Dados com Servidor | 1d? | 2008-10-02 | 2008-10-02 |  | 0d |  |  |  |  |

| ID | WBS | Task | Type | Duration | Start | Finish | Total slack |
| --- | --- | --- | --- | --- | --- | --- | --- |
| 32 | 3.2 | **Implementação dos Casos de Uso Web** |  | 1d? | 2008-10-02 | 2008-10-02 | 0d |
| 33 | 3.2.1 | Atualizar Profissional de Saude |  | 1d? | 2008-10-02 | 2008-10-02 | 0d |
| 34 | 3.2.2 | Consultar Profissional de Saude |  | 1d? | 2008-10-02 | 2008-10-02 | 0d |
| 35 | 3.2.3 | Cadastrar Paciente |  | 1d? | 2008-10-02 | 2008-10-02 | 0d |
| 36 | 3.2.4 | Atualizar Paciente |  | 1d? | 2008-10-02 | 2008-10-02 | 0d |
| 37 | 3.2.5 | Consultar Paciente |  | 1d? | 2008-10-02 | 2008-10-02 | 0d |
| 38 | 3.2.6 | Preencher Ficha Diária |  | 1d? | 2008-10-02 | 2008-10-02 | 0d |
| 39 | 3.2.7 | Atualizar Ficha Diária |  | 1d? | 2008-10-02 | 2008-10-02 | 0d |
| 40 | 3.2.8 | Consultar Ficha Diária |  | 1d? | 2008-10-02 | 2008-10-02 | 0d |
| 41 | 3.2.9 | Consolidar BPA |  | 1d? | 2008-10-02 | 2008-10-02 | 0d |
| 42 | 3.2.10 | Sincronizar Dispositivel Móvel |  | 1d? | 2008-10-02 | 2008-10-02 | 0d |
| 43 | 3.2.11 | Gerar Relatório |  | 1d? | 2008-10-02 | 2008-10-02 | 0d |
| 45 | 4 | Dead Line | milestone | 0d | 2008-10-02 | 2008-10-02 | 1d |
